How a schedule from an exported table changed from version to version. A marks actual dates.

## Version 1 (saved 2026-07-14)

| ID | Task | Start | Finish |
| --- | --- | --- | --- |
| 1 | Current System Analysis | 2024-06-01 | 2024-06-08 |
| 2 | Upgrade Planning | 2024-06-09 | 2024-06-20 |
| 3 | Compatibility Testing | 2024-06-21 | 2024-07-06 |
| 4 | Data Backup | 2024-07-07 | 2024-07-13 |
| 5 | Platform Upgrade Execution | 2024-07-14 | 2024-07-24 |
| 6 | Post-Upgrade Testing | 2024-07-25 | 2024-08-05 |
| 7 | Database Optimization | 2024-07-13 | 2024-07-25 |
| 8 | Security Hardening | 2024-07-26 | 2024-08-08 |
| 9 | Load Testing | 2024-08-09 | 2024-08-18 |
| 10 | Documentation | 2024-08-19 | 2024-09-01 |
| 11 | Performance Optimization | 2024-08-28 | 2024-09-05 |
| 12 | UAT Preparation | 2024-09-06 | 2024-09-11 |

## Version 2 (saved 2026-09-09)

Last finish 2024-09-11 → 2026-10-19 (+768d).

Added:

| ID | Task | Start | Finish |
| --- | --- | --- | --- |
| 13 | 3 - Puesta en marcha | 2026-08-04 | 2026-08-27 |

Changed:

| ID | Task | Start | Finish | Other |
| --- | --- | --- | --- | --- |
| 4 | 1 - Diagnóstico | 2024-07-07 → 2026-08-10 (+764d) | 2024-07-13 → 2026-08-28 (+776d) | was named Data Backup |
| 1 | Inventario de fuentes | 2024-06-01 → 2026-08-10 (+800d) | 2024-06-08 → 2026-08-14 (+797d) | was named Current System Analysis |
| 2 | Análisis de calidad de datos | 2024-06-09 → 2026-08-17 (+799d) | 2024-06-20 → 2026-08-25 (+796d) | was named Upgrade Planning |
| 3 | Informe de brechas | 2024-06-21 → 2026-08-26 (+796d) | 2024-07-06 → 2026-08-28 (+783d) | was named Compatibility Testing |
| 9 | Revisión con referentes | 2024-08-09 → 2026-10-07 (+789d) | 2024-08-18 → 2026-10-13 (+786d) | was named Load Testing |
| 5 | Diseño de indicadores | 2024-07-14 → 2026-08-31 (+778d) | 2024-07-24 → 2026-09-07 (+775d) | was named Platform Upgrade Execution |
| 6 | Automatización de carga | 2024-07-25 → 2026-09-08 (+775d) | 2024-08-05 → 2026-09-23 (+779d) | was named Post-Upgrade Testing |
| 7 | Prototipo navegable | 2024-07-13 → 2026-09-24 (+803d) | 2024-07-25 → 2026-10-06 (+803d) | was named Database Optimization |
| 8 | 2 - Construcción | 2024-07-26 → 2026-08-31 (+766d) | 2024-08-08 → 2026-10-06 (+789d) | was named Security Hardening |
| 12 | Cierre y acta | 2024-09-06 → 2026-08-26 (+719d) | 2024-09-11 → 2026-08-27 (+715d) | was named UAT Preparation |
| 10 | Ajustes finales | 2024-08-19 → 2026-10-14 (+786d) | 2024-09-01 → 2026-10-19 (+778d) | was named Documentation |
| 11 | 3 - Validación | 2024-08-28 → 2026-10-07 (+770d) | 2024-09-05 → 2026-10-19 (+774d) | was named Performance Optimization |
